# План проекта

Schedule from MS Project, 2025-10-03 to 2025-12-30, costs in ₽, A marks actual dates.

## Calendars

- Стандартный: Mon-Fri 09:00-13:00, 14:00-18:00; Sat-Sun off. Exceptions (off unless hours are given): 2025-10-04 to 2025-10-05 09:00-13:00, 14:00-18:00, 2025-10-11 to 2025-10-12 09:00-13:00, 14:00-18:00, 2025-11-01 09:00-13:00, 14:00-18:00.

## Resources

| Resource | Group | Rate |
| --- | --- | --- |
| Сергеев А.П (PM/ML) | Стоимость за использование | 520 |
| Ивашнев С.Ю. (Backend/Analysist) |  | 460 |
| Саватин В.А. (Pipeline/QA/DevOps) |  | 460 |
| Кодиров А.К. (UX/UI/Frontend) |  | 420 |
| Премия |  |  |
| Командировочные |  |  |
| Прочие расходы |  |  |
| Закупка ПО |  |  |

## Schedule

| ID | WBS | Task | Duration | Start | Finish | Predecessors | Complete | Remaining | Baseline start | Baseline finish | Baseline duration | Total slack | Free slack | Constraint | Resources | Work | Actual work | Cost | Actual cost | Срок |
| --- | --- | --- | --- | --- | --- | --- | --- | --- | --- | --- | --- | --- | --- | --- | --- | --- | --- | --- | --- | --- |
| 1 | 1 | **Speak2MD — план проекта (MVP→FULL)** | 68d | 2025-10-03 A | 2025-12-30 |  | 17% | 56.4d | 2025-10-03 | 2025-11-19 | 39d | 0d |  |  |  | 748.16h | 99.52h | 311,907.2 | 515.2 | НД |
| 2 | 1.1 | КТ1: Защита тематики и стека | 1d | 2025-10-03 A | 2025-10-03 A |  | 100% |  | 2025-10-03 | 2025-10-03 | 1d |  |  | start no earlier than 2025-10-03 |  |  |  |  |  | 10.03.2025 0:00 |
| 3 | 1.2 | **1. Оценка (Спринт 1 — выполнен)** | 15d | 2025-10-03 A | 2025-10-17 A |  | 100% |  | 2025-10-03 | 2025-10-17 | 15d |  |  |  |  | 98.4h | 98.4h |  |  | НД |
| 4 | 1.2.1 | 1.1 Детализация функциональных требований | 2d | 2025-10-03 A | 2025-10-04 A |  | 100% |  | 2025-10-03 | 2025-10-04 | 2d |  |  | finish no earlier than 2025-10-04 | Сергеев А.П (PM/ML) [90%] | 14.4h | 14.4h |  |  | НД |
| 5 | 1.2.2 | 1.2 Пользовательские истории (US-001..010) | 2d | 2025-10-05 A | 2025-10-06 A | 4 | 100% |  | 2025-10-05 | 2025-10-06 | 2d |  |  | finish no earlier than 2025-10-06 | Кодиров А.К. (UX/UI/Frontend) [60%] | 9.6h | 9.6h |  |  | НД |
| 6 | 1.2.3 | 1.3 Смета проекта | 2d | 2025-10-08 A | 2025-10-09 A | 5 | 100% |  | 2025-10-08 | 2025-10-09 | 2d |  |  | finish no earlier than 2025-10-09 | Сергеев А.П (PM/ML) [90%] | 14.4h | 14.4h |  |  | НД |
| 7 | 1.2.4 | 1.4 Паспорт проекта (v1.3) | 3d | 2025-10-10 A | 2025-10-12 A | 6 | 100% |  | 2025-10-10 | 2025-10-12 | 3d |  |  | start no earlier than 2025-10-10 | Сергеев А.П (PM/ML) [90%] | 21.6h | 21.6h |  |  | 10.13.2025 0:00 |
| 8 | 1.2.5 | 1.5 Критерии приемки (DoD, NFR) | 1d | 2025-10-13 A | 2025-10-13 A | 7 | 100% |  | 2025-10-13 | 2025-10-13 | 1d |  |  |  | Саватин В.А. (Pipeline/QA/DevOps) [70%] | 5.6h | 5.6h |  |  | 10.13.2025 0:00 |
| 9 | 1.2.6 | 1.6 API-контракты (черновик) | 2d | 2025-10-13 A | 2025-10-14 A | 7 | 100% |  | 2025-10-13 | 2025-10-14 | 2d |  |  |  | Ивашнев С.Ю. (Backend/Analysist) [70%] | 11.2h | 11.2h |  |  | 10.13.2025 0:00 |
| 10 | 1.2.7 | 1.7 План в MS Project | 3d | 2025-10-15 A | 2025-10-17 A | 9 | 100% |  | 2025-10-15 | 2025-10-17 | 3d |  |  |  | Сергеев А.П (PM/ML) [90%] | 21.6h | 21.6h |  |  | 10.13.2025 0:00 |
| 11 | 1.3 | **2. Выбор/Архитектура (Спринт 2)** | 3.8d | 2025-10-20 A | 2025-10-23 |  | 3% | 3.67d | 2025-10-20 | 2025-10-22 | 3d | 49.2d |  |  |  | 43.36h | 1.12h | 21,395.2 | 515.2 | 10.03.2025 0:00 |
| 12 | 1.3.1 | 2.1 План архитектуры системы | 1d | 2025-10-20 A | 2025-10-20 | 10 | 20% | 0.8d | 2025-10-20 | 2025-10-20 | 1d | 11d | 0d |  | Ивашнев С.Ю. (Backend/Analysist) [70%]; Сергеев А.П (PM/ML) [90%] | 11.36h | 1.12h | 5,571.2 | 515.2 | 10.03.2025 0:00 |
| 13 | 1.3.2 | 2.2 Репозиторий GitHub | 1d | 2025-10-21 | 2025-10-21 | 12 |  |  | 2025-10-21 | 2025-10-21 | 1d | 39.5d |  |  | Кодиров А.К. (UX/UI/Frontend) [60%] | 4.8h |  | 2,016 |  | 10.03.2025 0:00 |
| 14 | 1.3.3 | 2.3 Настройка YouTrack | 1d | 2025-10-21 | 2025-10-21 | 12 |  |  | 2025-10-21 | 2025-10-21 | 1d | 16d | 0d |  | Сергеев А.П (PM/ML) [90%] | 7.2h |  | 3,744 |  | 10.03.2025 0:00 |
| 15 | 1.3.4 | 2.4 CI/CD пайплайны | 1d | 2025-10-22 | 2025-10-22 | 14 |  |  | 2025-10-22 | 2025-10-22 | 1d | 16d | 0d |  | Саватин В.А. (Pipeline/QA/DevOps) [70%] | 5.6h |  | 2,576 |  | 10.03.2025 0:00 |
| 16 | 1.3.5 | КТ: Паспорт утвержден | 1d | 2025-10-20 | 2025-10-22 | 10 |  |  | 2025-10-20 | 2025-10-20 | 1d | 38.7d |  |  | Сергеев А.П (PM/ML) [90%] | 7.2h |  | 3,744 |  | 10.13.2025 0:00 |
| 17 | 1.3.6 | КТ: ТЗ на MVP разработано | 1d | 2025-10-22 | 2025-10-23 | 12 |  |  | 2025-10-21 | 2025-10-21 | 1d | 37.7d |  |  | Сергеев А.П (PM/ML) [90%] | 7.2h |  | 3,744 |  | 10.17.2025 0:00 |
| 18 | 1.4 | **3. Определение/Окружение (Спринт 3)** | 4d | 2025-10-23 | 2025-10-28 |  |  |  | 2025-10-23 | 2025-10-28 | 4d | 11d |  |  |  | 28.8h |  | 13,488 |  | 10.17.2025 0:00 |
| 19 | 1.4.1 | 3.1 Подготовка окружений | 1d | 2025-10-23 | 2025-10-23 | 15 |  |  | 2025-10-23 | 2025-10-23 | 1d | 16d | 0d |  | Саватин В.А. (Pipeline/QA/DevOps) [70%] | 5.6h |  | 2,576 |  | 10.17.2025 0:00 |
| 20 | 1.4.2 | 3.2 Структура проекта | 1d | 2025-10-24 | 2025-10-24 | 19 |  |  | 2025-10-24 | 2025-10-24 | 1d | 16d | 0d |  | Сергеев А.П (PM/ML) [90%] | 7.2h |  | 3,744 |  | 10.17.2025 0:00 |
| 21 | 1.4.3 | 3.3 Мониторинг | 1d | 2025-10-24 | 2025-10-24 | 19 |  |  | 2025-10-24 | 2025-10-24 | 1d | 34.5d | 0d |  | Ивашнев С.Ю. (Backend/Analysist) [70%] | 5.6h |  | 2,576 |  | 10.17.2025 0:00 |
| 22 | 1.4.4 | 3.4 Учёт времени | 1d | 2025-10-27 | 2025-10-27 | 20 |  |  | 2025-10-27 | 2025-10-27 | 1d | 35.5d |  |  | Саватин В.А. (Pipeline/QA/DevOps) [70%] | 5.6h |  | 2,576 |  | 10.17.2025 0:00 |
| 23 | 1.4.5 | 3.5 Документирование процессов | 1d | 2025-10-27 | 2025-10-27 | 21 |  |  | 2025-10-27 | 2025-10-27 | 1d | 34.5d | 0d |  | Кодиров А.К. (UX/UI/Frontend) [60%] | 4.8h |  | 2,016 |  | 10.17.2025 0:00 |
| 24 | 1.4.6 | КТ: План КТ утвержден | 1d | 2025-10-28 | 2025-10-28 | 23 |  |  | 2025-10-28 | 2025-10-28 | 1d | 34.5d |  |  |  |  |  |  |  | 10.18.2025 0:00 |

Notes:
- 1: Основано на спринт-плане и Паспорте
- 2: Контрольная точка 1 (курс) / Ресурсы: Команда
- 3: Еженедельные спринты, Sprint 1 закрыт
- 4: Спринт 1; FR уточнены / Ресурсы: Ивашнев С.Ю. (Backend/Analyst); Сергеев А.П. (PM/ML)
- 5: Приоритеты High/Medium/Low / Ресурсы: Кодиров А.К. (UX/UI/Frontend/TechWriter); Ивашнев С.Ю. (Backend/Analyst)
- 6: Смета по шаблону курса / Ресурсы: Сергеев А.П. (PM/ML)
- 7: Дата утверждения в Паспорте / Ресурсы: Сергеев А.П. (PM/ML)
- 8: WER≤18%, 60мин≤30мин, WS/SSE≤5с / Ресурсы: Саватин В.А. (Pipeline/QA/DevOps); Сергеев А.П. (PM/ML)
- 9: POST /upload, GET /status, /result / Ресурсы: Ивашнев С.Ю. (Backend/Analyst)
- 10: Эта задача то, что вы делаете сейчас / Ресурсы: Сергеев А.П. (PM/ML)
- 12: Архитектура/схемы / Ресурсы: Ивашнев С.Ю. (Backend/Analyst); Саватин В.А. (Pipeline/QA/DevOps)
- 13: Ресурсы: Сергеев А.П. (PM/ML)
- 14: Ресурсы: Сергеев А.П. (PM/ML)
- 15: Ресурсы: Саватин В.А. (Pipeline/QA/DevOps)
- 16: Из Паспорта / Ресурсы: Сергеев А.П. (PM/ML)
- 17: Ресурсы: Ивашнев С.Ю. (Backend/Analyst)
- 19: Ресурсы: Саватин В.А. (Pipeline/QA/DevOps)
- 20: Ресурсы: Ивашнев С.Ю. (Backend/Analyst)
- 21: Ресурсы: Саватин В.А. (Pipeline/QA/DevOps)
- 22: Ресурсы: Кодиров А.К. (UX/UI/Frontend/TechWriter)
- 23: Ресурсы: Кодиров А.К. (UX/UI/Frontend/TechWriter)
- 24: Ресурсы: Сергеев А.П. (PM/ML)

| ID | WBS | Task | Type | Duration | Start | Finish | Predecessors | Baseline start | Baseline finish | Baseline duration | Total slack | Free slack | Constraint | Resources | Work | Cost | Срок |
| --- | --- | --- | --- | --- | --- | --- | --- | --- | --- | --- | --- | --- | --- | --- | --- | --- | --- |
| 25 | 1.5 | **4. Выполнение / Core разработка (Спринт 4)** |  | 10d | 2025-10-27 | 2025-11-06 |  | 2025-10-27 | 2025-11-03 | 7d | 11d |  |  |  | 90.4h | 43,360 | 10.18.2025 0:00 |
| 26 | 1.5.1 | 4.1 Скелет FastAPI |  | 1d | 2025-10-27 | 2025-10-27 | 20 | 2025-10-27 | 2025-10-27 | 1d | 16d | 0d |  | Ивашнев С.Ю. (Backend/Analysist) [70%] | 5.6h | 2,576 | 10.18.2025 0:00 |
| 27 | 1.5.2 | 4.2 Настройка PostgreSQL |  | 1d | 2025-10-28 | 2025-10-28 | 26 | 2025-10-28 | 2025-10-28 | 1d | 16d | 0d |  | Ивашнев С.Ю. (Backend/Analysist) [70%] | 5.6h | 2,576 | 10.18.2025 0:00 |
| 28 | 1.5.3 | 4.3 Модели данных |  | 1d | 2025-10-29 | 2025-10-29 | 27 | 2025-10-29 | 2025-10-29 | 1d | 16d | 0d |  | Ивашнев С.Ю. (Backend/Analysist) [70%]; Сергеев А.П (PM/ML) [90%] | 12.8h | 6,320 | 10.18.2025 0:00 |
| 29 | 1.5.4 | 4.4 API endpoints (/upload,/status,/result) |  | 1d | 2025-10-30 | 2025-10-30 | 28 | 2025-10-30 | 2025-10-30 | 1d | 16d | 0d |  | Ивашнев С.Ю. (Backend/Analysist) [70%] | 5.6h | 2,576 | 10.18.2025 0:00 |
| 30 | 1.5.5 | 4.5 ML pipeline (VAD→ASR→структура) |  | 1d | 2025-10-30 | 2025-10-30 | 27 | 2025-10-29 | 2025-10-29 | 1d | 18d | 2d |  | Сергеев А.П (PM/ML) [90%] | 7.2h | 3,744 | 10.18.2025 0:00 |
| 31 | 1.5.6 | 4.6 WebSocket/SSE прогресс |  | 1d | 2025-10-31 | 2025-10-31 | 29 | 2025-10-31 | 2025-10-31 | 1d | 26d | 0d |  | Ивашнев С.Ю. (Backend/Analysist) [70%]; Сергеев А.П (PM/ML) [90%] | 12.8h | 6,320 | 10.18.2025 0:00 |
| 32 | 1.5.7 | 4.7 UI/UX дизайн |  | 1d | 2025-10-28 | 2025-10-28 | 26 | 2025-10-28 | 2025-10-28 | 1d | 18d | 0d |  | Кодиров А.К. (UX/UI/Frontend) [60%] | 4.8h | 2,016 | 10.18.2025 0:00 |
| 33 | 1.5.8 | 4.8 Фронтенд интерфейс |  | 1d | 2025-10-29 | 2025-10-29 | 32 | 2025-10-29 | 2025-10-29 | 1d | 18d | 0d |  | Кодиров А.К. (UX/UI/Frontend) [60%] | 4.8h | 2,016 | 10.18.2025 0:00 |
| 34 | 1.5.9 | 4.9 Интеграция с очередями |  | 1d | 2025-10-31 | 2025-10-31 | 29 | 2025-10-31 | 2025-10-31 | 1d | 16d | 0d |  | Саватин В.А. (Pipeline/QA/DevOps) [70%] | 5.6h | 2,576 | 10.18.2025 0:00 |
| 35 | 1.5.10 | 4.10 Интеграционные тесты E2E |  | 1d | 2025-11-04 | 2025-11-04 | 33, 31, 34 | 2025-11-01 | 2025-11-01 | 1d | 26.5d | 0d |  | Саватин В.А. (Pipeline/QA/DevOps) [70%] | 5.6h | 2,576 | 10.18.2025 0:00 |
| 36 | 1.5.11 | 4.11 Документация API (MD+OpenAPI) |  | 1d | 2025-11-01 | 2025-11-01 | 29 | 2025-10-31 | 2025-10-31 | 1d | 20.5d | 18d |  | Ивашнев С.Ю. (Backend/Analysist) [70%]; Сергеев А.П (PM/ML) [90%] | 12.8h | 6,320 | 10.18.2025 0:00 |
| 37 | 1.5.12 | Веха: MVP готов к демонстрации |  | 1d | 2025-11-06 | 2025-11-06 | 35 | 2025-11-03 | 2025-11-03 | 1d | 26.5d |  |  | Сергеев А.П (PM/ML) [90%] | 7.2h | 3,744 | 10.31.2025 0:00 |
| 38 | 1.6 | **5. Надежность/Запись/Ошибки (Спринт 5)** |  | 6d | 2025-11-05 | 2025-11-12 |  | 2025-10-30 | 2025-11-05 | 6d |  |  |  |  | 32.8h | 14,944 | 10.31.2025 0:00 |
| 39 | 1.6.1 | 5.1 Запись через MediaRecorder |  | 1d | 2025-11-05 | 2025-11-05 | 33 | 2025-10-30 | 2025-10-30 | 1d | 8d | 0d |  | Кодиров А.К. (UX/UI/Frontend) [60%] | 4.8h | 2,016 | 10.31.2025 0:00 |
| 40 | 1.6.2 | 5.2 UI: Запись/Пауза/Стоп/предпрослушивание |  | 1d | 2025-11-06 | 2025-11-06 | 39 | 2025-10-31 | 2025-10-31 | 1d | 8d | 0d |  | Кодиров А.К. (UX/UI/Frontend) [60%] | 4.8h | 2,016 | 10.31.2025 0:00 |
| 41 | 1.6.3 | 5.3 Обработка ошибок/повтор запуска |  | 1d | 2025-11-05 | 2025-11-05 | 29 | 2025-10-31 | 2025-10-31 | 1d | 8d | 0d |  |  |  |  | 10.31.2025 0:00 |
| 42 | 1.6.4 | 5.4 Идемпотентность/ретраи |  | 1d | 2025-11-05 | 2025-11-05 | 34 | 2025-11-01 | 2025-11-01 | 1d | 8d | 0d |  | Саватин В.А. (Pipeline/QA/DevOps) [70%] | 5.6h | 2,576 | 10.31.2025 0:00 |
| 43 | 1.6.5 | 5.5 Нагрузочное тестирование (60мин ≤ 30мин) |  | 1d | 2025-11-06 | 2025-11-06 | 41, 42, 30 | 2025-11-03 | 2025-11-03 | 1d | 8d | 0d |  | Саватин В.А. (Pipeline/QA/DevOps) [70%] | 5.6h | 2,576 | 10.31.2025 0:00 |
| 44 | 1.6.6 | 5.6 UX‑ревью и исправления |  | 1d | 2025-11-07 | 2025-11-07 | 40, 43 | 2025-11-04 | 2025-11-04 | 1d | 8d | 0d |  | Кодиров А.К. (UX/UI/Frontend) [60%] | 4.8h | 2,016 | 10.31.2025 0:00 |
| 45 | 1.6.7 | Веха: Демо спринта 5 |  | 1d | 2025-11-10 | 2025-11-10 | 44 | 2025-11-05 | 2025-11-05 | 1d | 8d | 0d |  | Сергеев А.П (PM/ML) [90%] | 7.2h | 3,744 | 11.14.2025 0:00 |
| 46 | 1.7 | **6. Добавление функциональности/Документация/Ввод (Спринт 6)** |  | 36d | 2025-11-11 | 2025-12-30 |  | 2025-11-01 | 2025-11-11 | 8d |  |  |  |  | 355.2h | 167,472 | 11.14.2025 0:00 |
| 47 | 1.7.1 | 6.1 Регистрация/логин/Refresh |  | 2d | 2025-11-11 | 2025-11-12 | 45, 44 |  |  |  | 8d | 0d | start no earlier than 2025-11-07 | Ивашнев С.Ю. (Backend/Analysist) [70%]; Сергеев А.П (PM/ML) [90%] | 25.6h | 12,640 |  |
| 48 | 1.7.2 | 6.2. Настройка управления доступом |  | 2d | 2025-11-13 | 2025-11-14 | 47 |  |  |  | 8d | 0d |  | Сергеев А.П (PM/ML) [90%]; Саватин В.А. (Pipeline/QA/DevOps) [70%] | 25.6h | 12,640 |  |
| 49 | 1.7.3 | 6.3 Сущность Transcript + CRUD |  | 2d | 2025-11-17 | 2025-11-18 | 48 |  |  |  | 8d | 0d | start no earlier than 2025-10-29 | Сергеев А.П (PM/ML) [90%] | 14.4h | 7,488 |  |
| 50 | 1.7.4 | 6.4 Лист транскриптов |  | 2d | 2025-11-19 | 2025-11-20 | 49 |  |  |  | 8d | 0d | start no earlier than 2025-11-01 | Саватин В.А. (Pipeline/QA/DevOps) [70%] | 11.2h | 5,152 |  |
| 51 | 1.7.5 | 6.5 Реализация подписки/планов, usage |  | 2d | 2025-11-21 | 2025-11-24 | 50 |  |  |  | 8d | 0d | start no earlier than 2025-11-05 | Ивашнев С.Ю. (Backend/Analysist) [70%] | 11.2h | 5,152 |  |
| 52 | 1.7.6 | 6.7 Реализация функций администратора |  | 2d | 2025-11-25 | 2025-11-26 | 51 |  |  |  | 8d | 0d | start no earlier than 2025-11-10 | Сергеев А.П (PM/ML) [90%]; Ивашнев С.Ю. (Backend/Analysist) [70%] | 25.6h | 12,640 |  |
| 53 | 1.7.7 | 6.8. UI: Регистрация/логин/подписка/админ |  | 10d | 2025-11-13 | 2025-11-26 | 44 |  |  |  | 10d | 2d | start no earlier than 2025-11-13 | Кодиров А.К. (UX/UI/Frontend) [60%] | 48h | 20,160 |  |
| 54 | 1.7.8 | 6.9 Аудит метрики |  | 2d | 2025-11-27 | 2025-11-28 | 52 |  |  |  | 8d | 0d |  | Саватин В.А. (Pipeline/QA/DevOps) [70%] | 11.2h | 5,152 |  |
| 55 | 1.7.9 | 6.10 Отладка/исправления |  | 6d | 2025-12-01 | 2025-12-08 | 53, 54 |  |  |  | 8d | 0d |  | Ивашнев С.Ю. (Backend/Analysist) [70%]; Кодиров А.К. (UX/UI/Frontend) [60%]; Саватин В.А. (Pipeline/QA/DevOps) [70%]; Сергеев А.П (PM/ML) [90%] | 139.2h | 65,472 |  |
| 56 | 1.7.10 | 6.11 Пуско-наладка стенда |  | 2d | 2025-12-09 | 2025-12-10 | 55 | 2025-11-06 | 2025-11-06 | 1d | 8d | 0d | start no earlier than 2025-12-09 | Ивашнев С.Ю. (Backend/Analysist) [70%]; Сергеев А.П (PM/ML) [90%] | 25.6h | 12,640 | 11.14.2025 0:00 |
| 57 | 1.7.11 | 6.12 Деплой и «Ввод в эксплуатацию» |  | 1d | 2025-12-11 | 2025-12-11 | 56 | 2025-11-07 | 2025-11-07 | 1d | 8d | 0d | start no earlier than 2025-11-28 | Сергеев А.П (PM/ML) [90%] | 7.2h | 3,744 | 11.25.2025 0:00 |
| 58 | 1.7.12 | 6.13 Freeze API контрактов (v1) |  | 1d | 2025-12-08 | 2025-12-08 | 36 | 2025-11-01 | 2025-11-01 | 1d | 11d | 3d | start no earlier than 2025-12-08 | Ивашнев С.Ю. (Backend/Analysist) [70%] | 5.6h | 2,576 | 11.25.2025 0:00 |
| 59 | 1.7.13 | 6.14 Руководство пользователя + скринкаст |  | 1d | 2025-12-12 | 2025-12-12 | 57, 58 | 2025-11-10 | 2025-11-10 | 1d | 8d | 0d | start no earlier than 2025-12-10 | Кодиров А.К. (UX/UI/Frontend) [60%] | 4.8h | 2,016 | 11.25.2025 0:00 |
| 60 | 1.7.14 | Веха: Этап «Выполнение» завершен | milestone | 0d | 2025-12-12 | 2025-12-12 | 59 | 2025-11-11 | 2025-11-11 | 1d | 8d | 0d | start no earlier than 2025-12-03 | Сергеев А.П (PM/ML) [90%] |  |  | 11.28.2025 0:00 |

Notes:
- 26: Ресурсы: Ивашнев С.Ю. (Backend/Analyst)
- 27: Ресурсы: Саватин В.А. (Pipeline/QA/DevOps)
- 28: Ресурсы: Ивашнев С.Ю. (Backend/Analyst); Саватин В.А. (Pipeline/QA/DevOps)
- 29: Ресурсы: Ивашнев С.Ю. (Backend/Analyst)
- 30: Ресурсы: Сергеев А.П. (PM/ML); Саватин В.А. (Pipeline/QA/DevOps)
- 31: Ресурсы: Ивашнев С.Ю. (Backend/Analyst); Саватин В.А. (Pipeline/QA/DevOps)
- 32: Ресурсы: Кодиров А.К. (UX/UI/Frontend/TechWriter)
- 33: Ресурсы: Кодиров А.К. (UX/UI/Frontend/TechWriter)
- 34: Ресурсы: Саватин В.А. (Pipeline/QA/DevOps)
- 35: Ресурсы: Саватин В.А. (Pipeline/QA/DevOps)
- 36: Ресурсы: Ивашнев С.Ю. (Backend/Analyst)
- 37: Ресурсы: Команда
- 39: Ресурсы: Кодиров А.К. (UX/UI/Frontend/TechWriter); Саватин В.А. (Pipeline/QA/DevOps)
- 40: Ресурсы: Кодиров А.К. (UX/UI/Frontend/TechWriter)
- 41: Ресурсы: Ивашнев С.Ю. (Backend/Analyst); Саватин В.А. (Pipeline/QA/DevOps)
- 42: Ресурсы: Саватин В.А. (Pipeline/QA/DevOps)
- 43: Ресурсы: Сергеев А.П. (PM/ML); Саватин В.А. (Pipeline/QA/DevOps)
- 44: Ресурсы: Кодиров А.К. (UX/UI/Frontend/TechWriter)
- 45: Ресурсы: Команда
- 56: Ресурсы: Команда
- 57: Публичный стенд / Ресурсы: Сергеев А.П. (PM/ML); Ивашнев С.Ю. (Backend/Analyst)
- 58: Ресурсы: Ивашнев С.Ю. (Backend/Analyst)
- 59: Ресурсы: Кодиров А.К. (UX/UI/Frontend/TechWriter)
- 60: Ресурсы: Сергеев А.П. (PM/ML)

| ID | WBS | Task | Type | Duration | Start | Finish | Predecessors | Baseline start | Baseline finish | Baseline duration | Total slack | Free slack | Constraint | Resources | Work | Cost | Срок | Ресурсы |
| --- | --- | --- | --- | --- | --- | --- | --- | --- | --- | --- | --- | --- | --- | --- | --- | --- | --- | --- |
| 61 | 1.8 | **7. Завершение (декабрь)** |  | 3d | 2025-12-15 | 2025-12-17 |  | 2025-11-12 | 2025-11-18 | 5d | 8d |  |  |  | 27.2h | 13,808 | 11.28.2025 0:00 |  |
| 62 | 1.8.1 | 7.1 Приемо-сдаточные испытания |  | 1d | 2025-12-15 | 2025-12-15 | 60 | 2025-11-12 | 2025-11-12 | 1d | 8d | 0d |  | Сергеев А.П (PM/ML) [90%] | 7.2h | 3,744 | 11.28.2025 0:00 | Команда |
| 63 | 1.8.2 | 7.2 Опытная эксплуатация |  | 1d | 2025-12-16 | 2025-12-16 | 62 | 2025-11-13 | 2025-11-13 | 1d | 8d | 0d |  | Саватин В.А. (Pipeline/QA/DevOps) [70%]; Сергеев А.П (PM/ML) [90%] | 12.8h | 6,320 | 11.28.2025 0:00 | Команда |
| 64 | 1.8.3 | 7.3 Извлечённые уроки оформлены | milestone | 0d | 2025-12-16 | 2025-12-16 | 63 | 2025-11-14 | 2025-11-14 | 1d | 8d | 0d |  | Сергеев А.П (PM/ML) [90%]; Ивашнев С.Ю. (Backend/Analysist) [70%] |  |  | 12.12.2025 0:00 | Сергеев А.П. (PM/ML) |
| 66 | 1.8.4 | 7.4 Итоговый отчёт утвержден | milestone | 0d | 2025-12-17 | 2025-12-17 |  | 2025-11-18 | 2025-11-18 | 1d | 8d | 0d |  | Сергеев А.П (PM/ML) [90%] |  |  | 12.16.2025 0:00 | Сергеев А.П. (PM/ML) |
| 67 | 1.9 | **8. Бюджет и затраты (ежемесячные)** |  | 59d | 2025-10-04 | 2025-12-18 |  | 2025-10-04 | 2025-11-19 | 38d | 8d |  |  |  | 72h | 37,440 | 12.16.2025 0:00 |  |
| 68 | 1.9.1 | 8.1 Премия — декабрь (100 000 ₽) |  | 1d | 2025-12-18 | 2025-12-18 | 66 | 2025-11-19 | 2025-11-19 | 1d | 8d |  |  | Сергеев А.П (PM/ML) [90%] | 7.2h | 3,744 | 12.15.2025 0:00 | Премия |
| 69 | 1.9.2 | 8.2 Страховые взносы — октябрь (60 800 ₽) |  | 1d | 2025-10-07 | 2025-10-07 |  | 2025-10-07 | 2025-10-07 | 1d | 63d |  | start no earlier than 2025-10-07 | Сергеев А.П (PM/ML) [90%] | 7.2h | 3,744 | 10.31.2025 0:00 | Страховые взносы |
| 70 | 1.9.3 | 8.3 Страховые взносы — ноябрь (60 800 ₽) |  | 1d | 2025-11-01 | 2025-11-01 |  | 2025-11-01 | 2025-11-01 | 1d | 42d |  | start no earlier than 2025-11-01 | Сергеев А.П (PM/ML) [90%] | 7.2h | 3,744 | 11.30.2025 0:00 | Страховые взносы |
| 71 | 1.9.4 | 8.4 Страховые взносы — декабрь (86 800 ₽) |  | 1d | 2025-11-19 | 2025-11-19 |  | 2025-11-19 | 2025-11-19 | 1d | 29d |  | start no earlier than 2025-11-19 | Сергеев А.П (PM/ML) [90%] | 7.2h | 3,744 | 12.16.2025 0:00 | Страховые взносы |
| 72 | 1.9.5 | 8.5 Командировочные — октябрь (46 200 ₽) |  | 1d | 2025-10-20 | 2025-10-20 |  | 2025-10-20 | 2025-10-20 | 1d | 52d |  |  | Сергеев А.П (PM/ML) [90%] | 7.2h | 3,744 | 10.31.2025 0:00 | Командировочные |
| 73 | 1.9.6 | 8.6 Командировочные — декабрь (52 200 ₽) |  | 1d | 2025-10-20 | 2025-10-20 |  | 2025-10-20 | 2025-10-20 | 1d | 52d |  |  | Сергеев А.П (PM/ML) [90%] | 7.2h | 3,744 | 12.10.2025 0:00 | Командировочные |
| 74 | 1.9.7 | 8.7 Закупка ПО — октябрь (12 000 ₽) |  | 1d | 2025-10-05 | 2025-10-05 |  | 2025-10-05 | 2025-10-05 | 1d | 65d |  | start no earlier than 2025-10-05 | Сергеев А.П (PM/ML) [90%] | 7.2h | 3,744 | 10.15.2025 0:00 | Закупка ПО |
| 75 | 1.9.8 | 8.8 Прочие расходы — октябрь (36 000 ₽) |  | 1d | 2025-10-04 | 2025-10-04 |  | 2025-10-04 | 2025-10-04 | 1d | 66d |  | start no earlier than 2025-10-04 | Сергеев А.П (PM/ML) [90%] | 7.2h | 3,744 | 10.31.2025 0:00 | Прочие расходы |
| 76 | 1.9.9 | 8.9 Прочие расходы — ноябрь (36 000 ₽) |  | 1d | 2025-11-04 | 2025-11-04 |  | 2025-11-04 | 2025-11-04 | 1d | 40d |  | start no earlier than 2025-11-04 | Сергеев А.П (PM/ML) [90%] | 7.2h | 3,744 | 11.30.2025 0:00 | Прочие расходы |
| 77 | 1.9.10 | 8.10 Прочие расходы — декабрь (36 000 ₽) |  | 1d | 2025-11-19 | 2025-11-19 |  | 2025-11-19 | 2025-11-19 | 1d | 29d |  | start no earlier than 2025-11-19 | Сергеев А.П (PM/ML) [90%] | 7.2h | 3,744 | 12.16.2025 0:00 | Прочие расходы |

Notes:
- 68: Назначить ресурс «Премия», Cost=100000
- 69: Назначить Cost=60800
- 70: Назначить Cost=60800
- 71: Назначить Cost=86800
- 72: Назначить Cost=46200
- 73: Назначить Cost=52200
- 74: Назначить Cost=12000
- 75: Назначить Cost=36000
- 76: Назначить Cost=36000
- 77: Назначить Cost=36000
